# appApprover

Schedule from MS Project, 2009-06-30 to 2009-08-04, costs in $, A marks actual dates.

## Calendars

- Standard: Mon-Fri 08:00-12:00, 13:00-17:00; Sat-Sun off.

## Resources

| Resource | Rate |
| --- | --- |
| Evan Machnic | 10 |

## Schedule

| ID | WBS | Task | Duration | Start | Finish | Predecessors | Complete | Remaining | Total slack | Constraint | Deadline | Resources | Work | Actual work | Cost | Actual cost |
| --- | --- | --- | --- | --- | --- | --- | --- | --- | --- | --- | --- | --- | --- | --- | --- | --- |
| 1 | 1 | **Process Flow** | 0.5d | 2009-06-30 08:00 A | 2009-06-30 12:00 A |  | 100% |  |  |  |  | Evan Machnic | 8h | 8h | 80 | 80 |
| 2 | 1.1 | Discuss Background With Manager | 1h | 2009-06-30 08:00 A | 2009-06-30 09:00 A |  | 100% |  |  | start no earlier than 2009-06-30 08:00 |  | Evan Machnic | 1h | 1h | 10 | 10 |
| 3 | 1.2 | Create User Types for Application | 1h | 2009-06-30 09:00 A | 2009-06-30 10:00 A | 2 | 100% |  |  | start no earlier than 2009-06-30 08:00 |  | Evan Machnic | 1h | 1h | 10 | 10 |
| 4 | 1.3 | Create Process Flow Chart | 2h | 2009-06-30 10:00 A | 2009-06-30 12:00 A | 3 | 100% |  |  | start no earlier than 2009-06-30 08:00 |  | Evan Machnic | 2h | 2h | 20 | 20 |
| 5 | 2 | **Prototype Design** | 5d | 2009-07-01 08:00 A | 2009-07-07 17:00 A |  | 100% |  |  |  |  | Evan Machnic | 83h | 83h | 830 | 830 |
| 6 | 2.1 | **Create Scenarios for User Roles** | 0.38d | 2009-07-01 08:00 A | 2009-07-01 11:00 A |  | 100% |  |  |  | 2009-07-01 17:00 | Evan Machnic | 11h | 11h | 110 | 110 |
| 7 | 2.1.1 | Whiteboard Scenario for Approving Manager | 3h | 2009-07-01 08:00 A | 2009-07-01 11:00 A | 1 | 100% |  |  | start no earlier than 2009-07-01 08:00 |  | Evan Machnic | 3h | 3h | 30 | 30 |
| 8 | 2.1.2 | Whiteboard Scenario for Requesting Manager | 3h | 2009-07-01 08:00 A | 2009-07-01 11:00 A | 1 | 100% |  |  | start no earlier than 2009-07-01 08:00 |  | Evan Machnic | 3h | 3h | 30 | 30 |
| 9 | 2.1.3 | Whiteboard Scenario for Applications Manager | 2h | 2009-07-01 08:00 A | 2009-07-01 10:00 A | 1 | 100% |  |  | start no earlier than 2009-07-01 08:00 |  | Evan Machnic | 2h | 2h | 20 | 20 |
| 10 | 2.2 | Create Use Cases for Scenarios | 3h | 2009-07-06 08:00 A | 2009-07-06 11:00 A | 7, 8, 9 | 100% |  |  | start no earlier than 2009-07-06 08:00 |  | Evan Machnic | 3h | 3h | 30 | 30 |
| 11 | 2.3 | **Create Artifacts for Prototype** | 2d | 2009-07-06 08:00 A | 2009-07-07 17:00 A |  | 100% |  |  |  |  | Evan Machnic | 29h | 29h | 290 | 290 |
| 12 | 2.3.1 | Whiteboard Artifacts for Approving Manager | 3h | 2009-07-06 08:00 A | 2009-07-06 11:00 A | 7 | 100% |  |  | start no earlier than 2009-07-06 08:00 |  | Evan Machnic | 3h | 3h | 30 | 30 |
| 13 | 2.3.2 | Whiteboard Artifacts for Requesting Manager | 2h | 2009-07-06 08:00 A | 2009-07-06 10:00 A | 8 | 100% |  |  | start no earlier than 2009-07-06 08:00 |  | Evan Machnic | 2h | 2h | 20 | 20 |
| 14 | 2.3.3 | Whiteboard Artifacts for Applications Manager | 3h | 2009-07-07 14:00 A | 2009-07-07 17:00 A | 9 | 100% |  |  | finish no earlier than 2009-07-07 17:00 |  | Evan Machnic | 3h | 3h | 30 | 30 |
| 15 | 2.3.4 | Create Wireframes of Artifacts on Computer | 5h | 2009-07-07 08:00 A | 2009-07-07 14:00 A | 12, 13, 14 | 100% |  |  | start no earlier than 2009-07-07 08:00 |  | Evan Machnic | 5h | 5h | 50 | 50 |
| 16 | 3 | Software Configuration | 3d | 2009-07-08 08:00 A | 2009-07-10 17:00 A |  | 100% |  |  | start no earlier than 2009-07-08 08:00 |  | Evan Machnic | 24h | 24h | 240 | 240 |
| 17 | 4 | **Application Approver WebApp** | 16d | 2009-07-13 08:00 A | 2009-08-03 17:00 |  | 62% | 6.03d | 0d |  |  | Evan Machnic | 407h | 183.27h | 4,070 | 1,832.67 |
| 18 | 4.1 | **Implement Restful Authentication** | 2d | 2009-07-13 08:00 A | 2009-07-14 17:00 A |  | 100% |  |  |  |  | Evan Machnic | 32h | 32h | 320 | 320 |
| 19 | 4.1.1 | Install Plugins | 2h | 2009-07-13 08:00 A | 2009-07-13 10:00 A | 16 | 100% |  |  | start no earlier than 2009-07-13 08:00 |  | Evan Machnic | 2h | 2h | 20 | 20 |
| 20 | 4.1.2 | Create Authenticated Users and Sessions | 3h | 2009-07-13 10:00 A | 2009-07-13 14:00 A | 19 | 100% |  |  | start no earlier than 2009-07-13 08:00 |  | Evan Machnic | 3h | 3h | 30 | 30 |
| 21 | 4.1.3 | Create New Roles for Users | 3h | 2009-07-13 10:00 A | 2009-07-13 14:00 A | 19 | 100% |  |  |  |  | Evan Machnic | 3h | 3h | 30 | 30 |
| 22 | 4.1.4 | Create Login Based on Role | 1d | 2009-07-14 08:00 A | 2009-07-14 17:00 A | 19, 20, 21 | 100% |  |  | start no earlier than 2009-07-14 08:00 |  | Evan Machnic | 8h | 8h | 80 | 80 |
| 23 | 4.2 | **Applications Manager Section** | 2.5d | 2009-07-15 08:00 A | 2009-07-17 12:00 A |  | 100% |  |  |  |  | Evan Machnic | 59h | 59h | 590 | 590 |
| 24 | 4.2.1 | Create Layout | 4h | 2009-07-15 08:00 A | 2009-07-15 12:00 A | 18 | 100% |  |  | start no earlier than 2009-07-15 08:00 |  | Evan Machnic | 4h | 4h | 40 | 40 |

| ID | WBS | Task | Duration | Start | Finish | Predecessors | Complete | Remaining | Total slack | Free slack | Constraint | Resources | Work | Actual work | Cost | Actual cost |
| --- | --- | --- | --- | --- | --- | --- | --- | --- | --- | --- | --- | --- | --- | --- | --- | --- |
| 25 | 4.2.2 | **Add Functionality for "Approved" Employees** | 1.5d | 2009-07-15 08:00 A | 2009-07-16 12:00 A |  | 100% |  |  |  |  | Evan Machnic | 16h | 16h | 160 | 160 |
| 26 | 4.2.2.1 | Display "Approved" Employees on Page | 4h | 2009-07-15 08:00 A | 2009-07-15 16:00 A | 24 | 100% |  |  |  |  | Evan Machnic | 4h | 4h | 40 | 40 |
| 27 | 4.2.2.2 | Add "Finish" Button that Updates Status | 4h | 2009-07-16 08:00 A | 2009-07-16 12:00 A | 26 | 100% |  |  |  |  | Evan Machnic | 4h | 4h | 40 | 40 |
| 28 | 4.2.3 | **Add Functionality for "Removed" Employees** | 1.5d | 2009-07-16 08:00 A | 2009-07-17 12:00 A |  | 100% |  |  |  |  | Evan Machnic | 19h | 19h | 190 | 190 |
| 29 | 4.2.3.1 | Display "Removed" Employees on Page | 4h | 2009-07-16 08:00 A | 2009-07-16 12:00 A | 26 | 100% |  |  |  | start no earlier than 2009-07-16 08:00 | Evan Machnic | 4h | 4h | 40 | 40 |
| 30 | 4.2.3.2 | Add "Finish" Button that Updates Status | 4h | 2009-07-17 08:00 A | 2009-07-17 12:00 A | 29 | 100% |  |  |  |  | Evan Machnic | 4h | 4h | 40 | 40 |
| 31 | 4.3 | **Requesting Manager Section** | 8d | 2009-07-17 13:00 A | 2009-07-29 12:00 |  | 61% | 3.15d | 1d | 0d |  | Evan Machnic | 132h | 81.6h | 1,320 | 816 |
| 32 | 4.3.1 | Create Layout | 1.5d | 2009-07-17 13:00 A | 2009-07-20 17:00 A | 23 | 100% |  |  |  |  | Evan Machnic | 12h | 12h | 120 | 120 |
| 33 | 4.3.2 | **Add Applications to Database** | 0.5d | 2009-07-21 08:00 A | 2009-07-21 12:00 A | 32 | 100% |  |  |  |  | Evan Machnic | 8h | 8h | 80 | 80 |
| 34 | 4.3.2.1 | Add Apps Table and Apps_Employees Join Table | 2h | 2009-07-21 08:00 A | 2009-07-21 10:00 A |  | 100% |  |  |  |  | Evan Machnic | 2h | 2h | 20 | 20 |
| 35 | 4.3.2.2 | Add Divisions and Sub Divisions to Database | 2h | 2009-07-21 10:00 A | 2009-07-21 12:00 A | 34 | 100% |  |  |  |  | Evan Machnic | 2h | 2h | 20 | 20 |
| 36 | 4.3.3 | Create Employee Search Functionality With Pagination | 3d | 2009-07-21 13:00 A | 2009-07-24 12:00 | 35 | 75% | 0.75d | 1.6d | 0d |  | Evan Machnic | 24h | 18h | 240 | 180 |
| 37 | 4.3.4 | Create Application Request Functionality per Employee | 3d | 2009-07-24 13:00 A | 2009-07-29 12:00 | 36 | 20% | 2.4d | 1d |  |  | Evan Machnic | 24h | 4.8h | 240 | 48 |
| 38 | 4.4 | **Approving Manager Section** | 3.5d | 2009-07-29 13:00 | 2009-08-03 17:00 |  |  |  | 0d |  |  | Evan Machnic | 56h |  | 560 |  |
| 39 | 4.4.1 | Create Layout | 4h | 2009-07-29 13:00 | 2009-07-29 17:00 | 31 |  |  | 1d | 0d |  | Evan Machnic | 4h |  | 40 |  |
| 40 | 4.4.2 | **Add Functionality for "Requested" Employees** | 1d | 2009-07-30 08:00 | 2009-07-30 17:00 |  |  |  | 1d |  |  | Evan Machnic | 16h |  | 160 |  |
| 41 | 4.4.2.1 | Display "Requested" Employees | 4h | 2009-07-30 08:00 | 2009-07-30 12:00 | 39 |  |  | 1d | 0d |  | Evan Machnic | 4h |  | 40 |  |
| 42 | 4.4.2.2 | Add Button that Updates Status | 4h | 2009-07-30 13:00 | 2009-07-30 17:00 | 41 |  |  | 1d |  |  | Evan Machnic | 4h |  | 40 |  |
| 43 | 4.4.4 | Add Employee Search Functionality | 2h | 2009-08-03 08:00 | 2009-08-03 10:00 | 42 |  |  | 0d |  | start no earlier than 2009-08-03 08:00 | Evan Machnic | 2h |  | 20 |  |
| 44 | 4.4.5 | Add Application Search Functionality | 6h | 2009-08-03 10:00 | 2009-08-03 17:00 | 43 |  |  | 0d |  |  | Evan Machnic | 6h |  | 60 |  |
| 45 | 5 | Test Application and Clean Up Code | 1d | 2009-08-04 08:00 | 2009-08-04 17:00 | 17 |  |  | 0d |  |  | Evan Machnic | 8h |  | 80 |  |
